# LOG650 G20 Rune — 110-sentraler: kapasitetsstyring og bemanningsdimensjonering

How a schedule from MS Project XML changed from version to version. A marks actual dates.

## Version 1 (saved 2026-03-08)

Note of the change: Legg til MS Project XML Gantt-fil for 110-prosjektet

| ID | WBS | Task | Duration | Start | Finish | Predecessors | Complete | Constraint |
| --- | --- | --- | --- | --- | --- | --- | --- | --- |
| 2 | 1 | **FASE 1 — Initiering** | 0d |  |  |  | 100% |  |
| 3 |  | L0 — Proposal: problemstilling, metode, datagrunnlag, WBS | 10d |  |  |  | 100% |  |
| 4 |  | M1 — Godkjent proposal | 0d |  |  | 3 |  | must finish on 2026-03-15 |
| 5 | 2 | **FASE 2 — Planlegging** | 0d |  |  | 3 | 80% |  |
| 6 |  | L1 — Avklart problemstilling, mal og avgrensninger | 1d |  |  |  | 100% |  |
| 7 |  | L2 — Modellvalg: Erlang-C (M/M/c) identifisert og begrunnet | 1d |  |  |  | 100% |  |
| 8 |  | L3 — Litteratursok: planlegging (sokestrategi, databaser, avgrensning) | 3d | 2026-03-07 | 2026-03-10 |  | 70% |  |
| 9 |  | L4 — Dataplan: datakilder, variabler, kvalitet, tilgangsstatus | 3d | 2026-03-07 | 2026-03-10 |  | 70% |  |
| 10 |  | L5 — Godkjent prosjektstyringsplan (dette dokumentet) | 5d | 2026-03-07 | 2026-03-14 |  | 90% |  |
| 11 |  | L6 — MS Project Gantt-diagram med referanseplan (baseline) | 2d | 2026-03-12 | 2026-03-14 | 10 | 50% |  |
| 12 |  | M2 — Godkjent prosjektplan + Gantt med referanseplan | 0d |  |  | 11 |  | must finish on 2026-03-15 |
| 13 | 3 | **FASE 3 — Gjennomforing** | 0d |  |  | 12 |  |  |
| 14 |  | L7 — Rapportskjelett + introduksjon og problemstilling v1 | 5d | 2026-03-16 | 2026-03-22 | 12 |  |  |
| 15 |  | L8 — Datainnhenting + EDA: LEO/BRIS, belastningsmonstre per skift, hendelsestypefordeling | 10d | 2026-03-16 | 2026-03-29 | 12 |  |  |
| 16 |  | L8b — ROS/beredskapsanalyse-gjennomgang: dokumentanalyse av dimensjoneringsgrunnlag | 10d | 2026-03-16 | 2026-03-29 | 12 |  |  |
| 17 |  | M3 — Rapportskjelett + intro v1 klar | 0d |  |  | 14 |  | must finish on 2026-03-22 |
| 18 |  | L9 — Parameterestimering: ankomstrate (lambda) og haandteringstid (mu) per skiftperiode | 5d | 2026-03-23 | 2026-03-29 | 15 |  |  |
| 19 |  | M4 — Data innhentet, validert og EDA ferdig | 0d |  |  | 18 |  | must finish on 2026-03-29 |
| 20 |  | L10 — Erlang-C modellering: bemanningsanbefaling per skiftperiode med VL-korreksjon | 5d | 2026-03-30 | 2026-04-05 | 18 |  |  |
| 21 |  | L11 — Validering og sensitivitetsanalyse: Poisson-test, robusthet ved parameterendringer | 10d | 2026-03-30 | 2026-04-12 | 20 |  |  |
| 22 |  | L12 — Teorikapittel: koeteori, Erlang-C, kapasitetsstyring i beredskapsoperative systemer | 10d | 2026-03-30 | 2026-04-12 | 12 |  |  |
| 23 |  | M5 — Erlang-C modell implementert og validert | 0d |  |  | 21 |  | must finish on 2026-04-10 |
| 24 |  | L13 — Benchmarking: modellanbefaling vs. faktisk bemanning, alle 12 norske 110-sentraler | 5d | 2026-04-06 | 2026-04-12 | 21 |  |  |
| 25 |  | L14 — Generaliseringsanalyse: hendelsesvolum, innbyggertall og areal som prediktorer | 10d | 2026-04-06 | 2026-04-19 | 24 |  |  |
| 26 |  | L15 — Resultater og diskusjon: rapportutkast inkl. operative saertrekk og modellbegrensninger | 5d | 2026-04-13 | 2026-04-19 | 25 |  |  |
| 27 |  | L16 — Godkjent hoved-utkast + peer review (skriftlig tilbakemelding til annen gruppe) | 10d | 2026-04-20 | 2026-05-03 | 26 |  |  |
| 28 |  | M6 — Godkjent hoved-utkast + peer review gjennomfart | 0d |  |  | 27 |  | must finish on 2026-04-30 |
| 29 | 4 | **FASE 4 — Avslutning** | 0d |  |  | 28 |  |  |
| 30 |  | L17 — Ferdigstilt rapport inkl. kode pa GitHub | 20d | 2026-05-04 | 2026-05-31 | 28 |  |  |
| 31 |  | M7 — Ferdigstilt rapport innlevert | 0d |  |  | 30 |  | must finish on 2026-05-31 |
| 32 |  | L18 — Muntlig eksamen | 0d |  |  | 31 |  | must finish on 2026-06-05 |

## Version 2 (saved 2026-03-08)

Note of the change: plan v1.5: L8c (EDA) og L11b (sensitivitetsanalyse) lagt til

Last finish stays 2026-05-31.

Added:

| ID | Task | Duration | Start | Finish | Predecessors |
| --- | --- | --- | --- | --- | --- |
| 33 | L8c – Eksplorativ dataanalyse (EDA): belastningsmonstre per skift og time, hendelsestypefordeling, Poisson-test på ankomstprosess | 10d | 2026-03-16 | 2026-03-29 | 15 |
| 34 | L11b – Sensitivitetsanalyse: effekt av endringer i ankomstrate, håndteringstid, bemanning og servicekrav; ring-flom som ekstremscenario | 5d | 2026-04-13 | 2026-04-19 | 21 |

Changed:

| ID | Task | Start | Finish | Duration | Predecessors | Other |
| --- | --- | --- | --- | --- | --- | --- |
| 15 | L8 – Datainnhenting: LEO/BRIS-data 2020–2025, DSB-årsrapporter, SSB-befolkningsdata; datavalidering og rådatastruktur |  | 2026-03-29 → 2026-03-22 (-7d) | 10d → 5d |  | was named L8 — Datainnhenting + EDA: LEO/BRIS, belastningsmonstre per skift, hendelsestypefordeling |
| 18 | L9 — Parameterestimering: ankomstrate (lambda) og haandteringstid (mu) per skiftperiode | 2026-03-23 → 2026-03-30 (+7d) | 2026-03-29 → 2026-04-05 (+7d) |  | 15 → 33 |  |
| 21 | L11 – Modellvalidering: kontrollere at Erlang-C-resultatene gjenspeiler målt belastning; sammenligning modell vs. observert kø/ventetid |  |  |  |  | was named L11 — Validering og sensitivitetsanalyse: Poisson-test, robusthet ved parameterendringer |
| 23 | M5 — Erlang-C modell implementert og validert |  |  |  | 21 → 34 |  |
| 24 | L13 — Benchmarking: modellanbefaling vs. faktisk bemanning, alle 12 norske 110-sentraler | 2026-04-06 → 2026-04-20 (+14d) | 2026-04-12 → 2026-04-26 (+14d) |  | 21 → 34 |  |

## Version 3 (saved 2026-03-08)

Note of the change: Gantt XML: fiks avhengighetslogikk og datoer

Last finish stays 2026-05-31.

Changed:

| ID | Task | Start | Finish | Duration | Predecessors |
| --- | --- | --- | --- | --- | --- |
| 19 | M4 — Data innhentet, validert og EDA ferdig |  |  |  | 18 → 33 |
| 20 | L10 — Erlang-C modellering: bemanningsanbefaling per skiftperiode med VL-korreksjon | 2026-03-30 → 2026-04-06 (+7d) | 2026-04-05 → 2026-04-12 (+7d) |  |  |
| 21 | L11 – Modellvalidering: kontrollere at Erlang-C-resultatene gjenspeiler målt belastning; sammenligning modell vs. observert kø/ventetid | 2026-03-30 → 2026-04-13 (+14d) | 2026-04-12 → 2026-04-19 (+7d) | 10d → 5d |  |
| 34 | L11b – Sensitivitetsanalyse: effekt av endringer i ankomstrate, håndteringstid, bemanning og servicekrav; ring-flom som ekstremscenario | 2026-04-13 → 2026-04-20 (+7d) | 2026-04-19 → 2026-04-26 (+7d) |  |  |
| 24 | L13 — Benchmarking: modellanbefaling vs. faktisk bemanning, alle 12 norske 110-sentraler | 2026-04-20 → 2026-04-27 (+7d) | 2026-04-26 → 2026-05-03 (+7d) |  |  |
| 25 | L14 — Generaliseringsanalyse: hendelsesvolum, innbyggertall og areal som prediktorer | 2026-04-06 → 2026-05-04 (+28d) | 2026-04-19 → 2026-05-10 (+21d) |  |  |
| 26 | L15 — Resultater og diskusjon: rapportutkast inkl. operative saertrekk og modellbegrensninger | 2026-04-13 → 2026-05-11 (+28d) | 2026-04-19 → 2026-05-17 (+28d) |  |  |
| 27 | L16 — Godkjent hoved-utkast + peer review (skriftlig tilbakemelding til annen gruppe) | 2026-04-20 → 2026-05-18 (+28d) | 2026-05-03 → 2026-05-24 (+21d) |  |  |
| 30 | L17 — Ferdigstilt rapport inkl. kode pa GitHub | 2026-05-04 → 2026-05-25 (+21d) |  |  |  |

## Version 4 (data date 2026-03-10, saved 2026-03-11)

Note of the change: Fase 2 ferdigstilt og innlevert 11. mars 2026

Last finish 2026-05-31 → 2026-06-01 (+1d). Complete tasks 3 → 4.

Added:

| ID | Task | Duration | Start | Finish |
| --- | --- | --- | --- | --- |
| 1 | **LOG650 G20 Rune — 110-sentraler: kapasitetsstyring og bemanningsdimensjonering** | 101d? | 2026-01-12 A | 2026-06-01 |

Changed:

| ID | Task | Start | Finish | Duration | Complete | Total float | Predecessors | Other |
| --- | --- | --- | --- | --- | --- | --- | --- | --- |
| 2 | **FASE 1 — Initiering** | none → 2026-01-12 A | none → 2026-03-07 A | 0d → 40d? |  |  |  | baseline start none → 2026-01-12; baseline finish none → 2026-03-07 |
| 3 | L0 — Proposal: problemstilling, metode, datagrunnlag, WBS | none → 2026-01-12 A | none → 2026-03-07 A | 10d → 40d? |  |  |  | baseline start none → 2026-01-12; baseline finish none → 2026-03-07 |
| 4 | M1 — Godkjent proposal | none → 2026-03-07 A | none → 2026-03-07 A | 0d → 0d? | 0% → 100% |  |  | constraint must finish on 2026-03-15 → none; baseline start none → 2026-03-07; baseline finish none → 2026-03-07 |
| 5 | **FASE 2 — Planlegging** | none → 2026-03-07 A | none → 2026-03-12 | 0d → 4d? | 80% → 55% |  | 3 → none | baseline start none → 2026-03-07; baseline finish none → 2026-03-12 |
| 6 | L1 — Avklart problemstilling, mal og avgrensninger | none → 2026-03-07 A | none → 2026-03-07 A | 1d → 0d? |  |  | none → 4 | baseline start none → 2026-03-07; baseline finish none → 2026-03-07 |
| 7 | L2 — Modellvalg: Erlang-C (M/M/c) identifisert og begrunnet | none → 2026-03-07 A | none → 2026-03-07 A | 1d → 0d? |  |  | none → 6 | baseline start none → 2026-03-07; baseline finish none → 2026-03-07 |
| 8 | L3 — Litteratursok: planlegging (sokestrategi, databaser, avgrensning) | 2026-03-07 → 2026-03-09 A (+2d) | 2026-03-10 → 2026-03-12 (+2d) | 3d → 4d | 70% → 50% | none → 57d | none → 7 | baseline start none → 2026-03-09; baseline finish none → 2026-03-12 |
| 9 | L4 — Dataplan: datakilder, variabler, kvalitet, tilgangsstatus | 2026-03-07 → 2026-03-09 A (+2d) | 2026-03-10 → 2026-03-11 (+1d) |  | 70% → 67% | none → 58d | none → 7 | baseline start none → 2026-03-09; baseline finish none → 2026-03-11 |
| 10 | L5 — Godkjent prosjektstyringsplan (dette dokumentet) | 2026-03-07 → 2026-03-09 A (+2d) | 2026-03-14 → 2026-03-11 (-3d) | 5d → 3d | 90% → 67% | none → 1d | none → 7 | baseline start none → 2026-03-09; baseline finish none → 2026-03-11 |
| 11 | L6 — MS Project Gantt-diagram med referanseplan (baseline) |  | 2026-03-14 → 2026-03-12 (-2d) | 2d → 1d | 50% → 0% | none → 1d |  | baseline start none → 2026-03-12; baseline finish none → 2026-03-12 |
| 12 | M2 — Godkjent prosjektplan + Gantt med referanseplan | none → 2026-03-12 | none → 2026-03-12 | 0d → 0d? |  | none → 1d |  | constraint must finish on 2026-03-15 → none; baseline start none → 2026-03-12; baseline finish none → 2026-03-12 |
| 13 | **FASE 3 — Gjennomforing** | none → 2026-03-13 | none → 2026-05-07 | 0d → 40d? |  |  | 12 → none | baseline start none → 2026-03-13; baseline finish none → 2026-05-07 |
| 14 | L7 — Rapportskjelett + introduksjon og problemstilling v1 | 2026-03-16 → 2026-03-13 (-3d) | 2026-03-22 → 2026-03-16 (-6d) | 5d → 2d |  | none → 55d |  | baseline start none → 2026-03-13; baseline finish none → 2026-03-16 |
| 15 | L8 – Datainnhenting: LEO/BRIS-data 2020–2025, DSB-årsrapporter, SSB-befolkningsdata; datavalidering og rådatastruktur | 2026-03-16 → 2026-03-13 (-3d) | 2026-03-22 → 2026-03-17 (-5d) | 5d → 3d |  | none → 1d |  | baseline start none → 2026-03-13; baseline finish none → 2026-03-17 |
| 16 | L8b — ROS/beredskapsanalyse-gjennomgang: dokumentanalyse av dimensjoneringsgrunnlag | 2026-03-16 → 2026-03-13 (-3d) | 2026-03-29 → 2026-03-17 (-12d) | 10d → 3d |  | none → 54d |  | baseline start none → 2026-03-13; baseline finish none → 2026-03-17 |
| 17 | M3 — Rapportskjelett + intro v1 klar | none → 2026-03-16 | none → 2026-03-16 | 0d → 0d? |  | none → 55d |  | constraint must finish on 2026-03-22 → none; baseline start none → 2026-03-16; baseline finish none → 2026-03-16 |
| 18 | L8c – Eksplorativ dataanalyse (EDA): belastningsmonstre per skift og time, hendelsestypefordeling, Poisson-test på ankomstprosess | 2026-03-16 → 2026-03-18 (+2d) | 2026-03-29 → 2026-03-24 (-5d) | 10d → 5d |  | none → 1d |  | baseline start none → 2026-03-18; baseline finish none → 2026-03-24 |
| 19 | L9 — Parameterestimering: ankomstrate (lambda) og haandteringstid (mu) per skiftperiode | 2026-03-30 → 2026-03-25 (-5d) | 2026-04-05 → 2026-03-27 (-9d) | 5d → 3d |  | none → 1d |  | baseline start none → 2026-03-25; baseline finish none → 2026-03-27 |
| 20 | M4 — Data innhentet, validert og EDA ferdig | none → 2026-03-24 | none → 2026-03-24 | 0d → 0d? |  | none → 49d |  | constraint must finish on 2026-03-29 → none; baseline start none → 2026-03-24; baseline finish none → 2026-03-24 |
| 21 | L10 — Erlang-C modellering: bemanningsanbefaling per skiftperiode med VL-korreksjon | 2026-04-06 → 2026-03-30 (-7d) | 2026-04-12 → 2026-04-01 (-11d) | 5d → 3d |  | none → 1d |  | baseline start none → 2026-03-30; baseline finish none → 2026-04-01 |
| 22 | L11 – Modellvalidering: kontrollere at Erlang-C-resultatene gjenspeiler målt belastning; sammenligning modell vs. observert kø/ventetid | 2026-04-13 → 2026-04-02 (-11d) | 2026-04-19 → 2026-04-06 (-13d) | 5d → 3d |  | none → 1d |  | baseline start none → 2026-04-02; baseline finish none → 2026-04-06 |
| 23 | L11b – Sensitivitetsanalyse: effekt av endringer i ankomstrate, håndteringstid, bemanning og servicekrav; ring-flom som ekstremscenario | 2026-04-20 → 2026-04-07 (-13d) | 2026-04-26 → 2026-04-09 (-17d) | 5d → 3d |  | none → 1d |  | baseline start none → 2026-04-07; baseline finish none → 2026-04-09 |
| 24 | L12 — Teorikapittel: koeteori, Erlang-C, kapasitetsstyring i beredskapsoperative systemer | 2026-03-30 → 2026-03-13 (-17d) | 2026-04-12 → 2026-04-02 (-10d) | 10d → 15d |  | none → 21d |  | baseline start none → 2026-03-13; baseline finish none → 2026-04-02 |
| 25 | M5 — Erlang-C modell implementert og validert | none → 2026-04-09 | none → 2026-04-09 | 0d → 0d? |  | none → 37d |  | constraint must finish on 2026-04-10 → none; baseline start none → 2026-04-09; baseline finish none → 2026-04-09 |
| 26 | L13 — Benchmarking: modellanbefaling vs. faktisk bemanning, alle 12 norske 110-sentraler | 2026-04-27 → 2026-04-10 (-17d) | 2026-05-03 → 2026-04-16 (-17d) | 5d → 5d? |  | none → 1d |  | baseline start none → 2026-04-10; baseline finish none → 2026-04-16 |
| 27 | L14 — Generaliseringsanalyse: hendelsesvolum, innbyggertall og areal som prediktorer | 2026-05-04 → 2026-04-17 (-17d) | 2026-05-10 → 2026-04-23 (-17d) | 10d → 5d |  | none → 1d |  | baseline start none → 2026-04-17; baseline finish none → 2026-04-23 |
| 28 | L15 — Resultater og diskusjon: rapportutkast inkl. operative saertrekk og modellbegrensninger | 2026-05-11 → 2026-04-24 (-17d) | 2026-05-17 → 2026-04-30 (-17d) | 5d → 5d? |  | none → 1d |  | baseline start none → 2026-04-24; baseline finish none → 2026-04-30 |
| 29 | L16 — Godkjent hoved-utkast + peer review (skriftlig tilbakemelding til annen gruppe) | 2026-05-18 → 2026-05-01 (-17d) | 2026-05-24 → 2026-05-07 (-17d) | 10d → 5d |  | none → 1d | 28 → 28, 24 | baseline start none → 2026-05-01; baseline finish none → 2026-05-07 |
| 30 | M6 — Godkjent hoved-utkast + peer review gjennomfart | none → 2026-05-07 | none → 2026-05-07 | 0d → 0d? |  | none → 1d |  | constraint must finish on 2026-04-30 → none; baseline start none → 2026-05-07; baseline finish none → 2026-05-07 |
| 31 | **FASE 4 — Avslutning** | none → 2026-05-08 | none → 2026-06-01 | 0d → 17d? |  |  | 30 → none | baseline start none → 2026-05-08; baseline finish none → 2026-05-21 |
| 32 | L17 — Ferdigstilt rapport inkl. kode pa GitHub | 2026-05-25 → 2026-05-08 (-17d) | 2026-05-31 → 2026-05-28 (-3d) | 20d → 15d |  | none → 1d |  | baseline start none → 2026-05-08; baseline finish none → 2026-05-28 |
| 33 | M7 — Ferdigstilt rapport innlevert | none → 2026-05-28 | none → 2026-05-28 | 0d → 0d? |  | none → 1d |  | constraint must finish on 2026-05-31 → none; baseline start none → 2026-05-28; baseline finish none → 2026-05-28 |
| 34 | L18 — Muntlig eksamen | none → 2026-06-01 | none → 2026-06-01 | 0d → 1d |  | none → 0d |  | constraint must finish on 2026-06-05 → start no earlier than 2026-06-01; baseline start none → 2026-05-28; baseline finish none → 2026-05-28 |

## Version 5 (data date 2026-03-10, saved 2026-03-17)

Note of the change: Fase 3 oppstart: litteratur, data, intervjuguide og benchmarkanalyse

Last finish stays 2026-06-01. Complete tasks 4 → 7.

Changed:

| ID | Task | Start | Finish | Complete | Total float |
| --- | --- | --- | --- | --- | --- |
| 1 | **LOG650 G20 Rune — 110-sentraler: kapasitetsstyring og bemanningsdimensjonering** |  |  | 36% → 40% | 0d → none |
| 5 | **FASE 2 — Planlegging** |  |  | 55% → 99% |  |
| 8 | L3 — Litteratursok: planlegging (sokestrategi, databaser, avgrensning) |  | 2026-03-12 A | 50% → 100% | 57d → none |
| 9 | L4 — Dataplan: datakilder, variabler, kvalitet, tilgangsstatus |  | 2026-03-11 A | 67% → 100% | 58d → none |
| 10 | L5 — Godkjent prosjektstyringsplan (dette dokumentet) |  |  | 67% → 99% | 1d → 58d |
| 11 | L6 — MS Project Gantt-diagram med referanseplan (baseline) | 2026-03-12 A | 2026-03-12 A | 0% → 100% | 1d → none |
| 12 | M2 — Godkjent prosjektplan + Gantt med referanseplan | 2026-03-12 A |  | 0% → 99% |  |

## Version 6 (data date 2026-04-06, saved 2026-04-06)

Note of the change: Gantt oppdatert: fremdrift fase 3, navneendringer, nye kapitteloppgaver

Last finish stays 2026-06-01. Complete tasks 7 → 21.

Added:

| ID | Task | Duration | Start | Finish |
| --- | --- | --- | --- | --- |
| 29 | L15a — Skrive kap 1 Innledning | 5d | 2026-04-07 | 2026-04-11 |
| 30 | L15b — Skrive kap 3 Teori | 6d | 2026-04-07 | 2026-04-14 |
| 31 | L15c — Skrive kap 8 Diskusjon | 6d | 2026-04-14 | 2026-04-21 |
| 32 | L15d — Skrive kap 9 Konklusjon | 3d | 2026-04-21 | 2026-04-23 |
| 33 | L15e — Sammenstille rapportutkast | 3d | 2026-04-23 | 2026-04-27 |

Changed:

| ID | Task | Start | Finish | Complete | Total float | Other |
| --- | --- | --- | --- | --- | --- | --- |
| 1 | **LOG650 G20 Rune — 110-sentraler: kapasitetsstyring og bemanningsdimensjonering** |  |  | 40% → 58% |  |  |
| 5 | **FASE 2 — Planlegging** |  | 2026-03-12 A | 99% → 100% |  |  |
| 10 | L5 — Godkjent prosjektstyringsplan (dette dokumentet) |  | 2026-03-11 A | 99% → 100% | 58d → none |  |
| 12 | M2 — Godkjent prosjektplan + Gantt med referanseplan |  | 2026-03-12 A | 99% → 100% | 1d → none |  |
| 13 | **FASE 3 — Gjennomforing** | 2026-03-13 A |  | 0% → 44% |  |  |
| 14 | L7 — Rapportskjelett + introduksjon og problemstilling v1 | 2026-03-13 A | 2026-03-16 A | 0% → 100% | 55d → none |  |
| 15 | L8 – Datainnhenting: LEO/BRIS-data 2020–2025, DSB-årsrapporter, SSB-befolkningsdata; datavalidering og rådatastruktur | 2026-03-13 A | 2026-03-17 A | 0% → 100% | 1d → none |  |
| 16 | L8b — ROS/beredskapsanalyse-gjennomgang: dokumentanalyse av dimensjoneringsgrunnlag | 2026-03-13 A | 2026-03-17 A | 0% → 100% | 54d → none |  |
| 17 | M3 — Rapportskjelett + intro v1 klar | 2026-03-16 A | 2026-03-16 A | 0% → 100% | 55d → none |  |
| 18 | L8c – Eksplorativ dataanalyse (EDA): belastningsmonstre per skift og time, hendelsestypefordeling, Poisson-test på ankomstprosess | 2026-03-18 A | 2026-03-24 A | 0% → 100% | 1d → none |  |
| 19 | L9 — Parameterestimering: ankomstrate (lambda) og haandteringstid (mu) per skiftperiode | 2026-03-25 A | 2026-03-27 A | 0% → 100% | 1d → none |  |
| 20 | M4 — Data innhentet, validert og EDA ferdig | 2026-03-24 A | 2026-03-24 A | 0% → 100% | 49d → none |  |
| 21 | L10 — Kapasitetsmodellering: Erlang-C grunnlinje + prosedyrbasert ankomstkonfliktmodell | 2026-03-30 A | 2026-04-01 A | 0% → 100% | 1d → none | was named L10 — Erlang-C modellering: bemanningsanbefaling per skiftperiode med VL-korreksjon |
| 22 | L11 — Modellvalidering: bindingstidsanalyse fra BRIS, kapasitetsnivåklassifisering | 2026-04-02 A | 2026-04-06 A | 0% → 100% | 1d → none | was named L11 – Modellvalidering: kontrollere at Erlang-C-resultatene gjenspeiler målt belastning; sammenligning modell vs. observert kø/ventetid |
| 23 | L11b — Sensitivitets- og scenarioanalyse: +1 operatør, dimensjoneringskurve | 2026-04-07 A | 2026-04-09 A | 0% → 100% | 1d → none | was named L11b – Sensitivitetsanalyse: effekt av endringer i ankomstrate, håndteringstid, bemanning og servicekrav; ring-flom som ekstremscenario |
| 25 | M5 — Kapasitetsmodell implementert og validert | 2026-04-09 A | 2026-04-09 A | 0% → 100% | 37d → none | was named M5 — Erlang-C modell implementert og validert |
| 26 | L13 — Benchmarking: modellanbefaling vs. faktisk bemanning, alle 12 norske 110-sentraler | 2026-04-10 A | 2026-04-16 A | 0% → 100% | 1d → none |  |
| 27 | L14 — Generaliseringsanalyse: hendelsesvolum, innbyggertall og areal som prediktorer | 2026-04-17 A |  | 0% → 75% | 1d → 2.5d |  |
| 28 | L15 — Resultater og diskusjon: rapportutkast inkl. operative saertrekk og modellbegrensninger | 2026-04-24 A |  | 0% → 50% |  |  |

## Version 7 (data date 2026-04-20, saved 2026-04-21)

Note of the change: Kvalitets- og konsistens-pass kap 1-9 + Gantt v3-oppdatering

Last finish stays 2026-06-01. Complete tasks 21 → 32.

Added:

| ID | Task | Duration | Start | Finish | Predecessors |
| --- | --- | --- | --- | --- | --- |
| 34 | L8d — Nasjonal DSB 2025-oversikt (508 228 oppdrag, alle 12 sentraler) | 4d | 2026-04-15 A | 2026-04-20 A | 18 |
| 35 | L8e — Spørreskjemaer 110-sentraler (intern kalibrering) | 13d | 2026-04-10 A | 2026-04-28 | 15 |
| 36 | L8f — DSB-ønskeliste BRIS-datauttrekk (22 datapunkter) | 2d | 2026-04-17 A | 2026-04-20 A | 15 |
| 37 | L11c — V3-regelutvidelse: L-aba krever Kilde=Alarm | 2d | 2026-04-18 A | 2026-04-21 A | 22 |
| 38 | L11d — V3 op-binder-semantikk + D-pri1/D-aba-splitt (2 ops vs serial) | 2d | 2026-04-18 A | 2026-04-21 A | 37 |
| 39 | L13b — LABA Sør-Vest dybdeanalyse n=50 (utfylt) | 3d | 2026-04-17 A | 2026-04-21 A | 26 |
| 40 | L13c — LABA Sør-Vest dybdeanalyse n=100 (sendt 20.04, venter) | 6d | 2026-04-20 A | 2026-04-27 | 39 |
| 41 | L14b — Nasjonal 2025-analyse per sentral | 3d | 2026-04-16 A | 2026-04-20 A | 27 |

Changed:

| ID | Task | Start | Finish | Duration | Complete | Total float | Other |
| --- | --- | --- | --- | --- | --- | --- | --- |
| 1 | **LOG650 G20 Rune — 110-sentraler: kapasitetsstyring og bemanningsdimensjonering** |  |  |  | 58% → 76% |  |  |
| 3 | L0 — Proposal: problemstilling, metode, datagrunnlag, WBS |  | 2026-03-07 A → 2026-03-06 A (-1d) |  |  |  |  |
| 13 | **FASE 3 — Gjennomforing** |  |  | 40d? → 34d? | 44% → 76% |  |  |
| 24 | L12 — Teorikapittel: kø-teori, Erlang-C, QED/square-root staffing, multiserver-jobs, op-binder-semantikk | 2026-03-13 A | 2026-04-02 → 2026-04-19 (+17d) | 15d → 26d | 0% → 58% | 21d → 10d | was named L12 — Teorikapittel: koeteori, Erlang-C, kapasitetsstyring i beredskapsoperative systemer; constraint none → finish no earlier than 2026-04-19 |
| 27 | L14 — Generaliseringsanalyse: hendelsesvolum, innbyggertall og areal som prediktorer |  |  |  | 75% → 90% | 2.5d → 27d |  |
| 28 | L15 — Resultater og diskusjon: rapportutkast inkl. operative saertrekk og modellbegrensninger | 2026-04-24 A → 2026-04-04 A (-20d) | 2026-04-30 → 2026-04-10 A (-20d) |  | 50% → 100% | 1d → none | constraint none → finish no earlier than 2026-04-19 |
| 29 | L15a — Skrive kap 1 Innledning | 2026-04-07 A | 2026-04-11 → 2026-04-07 (-4d) | 5d → 1d | 0% → 100% |  |  |
| 30 | L15b — Skrive kap 3 Teori | 2026-04-07 A | 2026-04-14 → 2026-04-07 (-7d) | 6d → 1d | 0% → 100% |  |  |
| 31 | L15c — Skrive kap 8 Diskusjon | 2026-04-14 A | 2026-04-21 → 2026-04-17 (-4d) | 6d → 4d | 0% → 100% |  |  |
| 32 | L15d — Skrive kap 9 Konklusjon | 2026-04-21 → 2026-04-19 A (-2d) | 2026-04-23 → 2026-04-20 A (-3d) | 3d → 1d | 0% → 100% |  |  |
| 33 | L15e — Sammenstille rapportutkast (sammendrag, vedlegg, skjelett-synk, referanseliste) | 2026-04-23 → 2026-04-20 A (-3d) | 2026-04-27 → 2026-04-29 (+2d) | 3d → 5d | 0% → 30% |  | was named L15e — Sammenstille rapportutkast |
| 42 | L16 — Godkjent hoved-utkast + peer review (skriftlig tilbakemelding til annen gruppe) | 2026-05-01 → 2026-04-20 (-11d) | 2026-05-07 → 2026-04-24 (-13d) |  |  | 1d → 10d |  |
| 43 | M6 — Godkjent hoved-utkast + peer review gjennomfart | 2026-05-07 → 2026-04-24 (-13d) | 2026-05-07 → 2026-04-24 (-13d) |  |  | 1d → 10d |  |

## Version 8 (data date 2026-04-22, saved 2026-04-26)

Note of the change: Peer review-utkast: rapport oppdatert med LABA n=100 og Gantt status pr 22.04

Last finish stays 2026-06-01. Complete tasks 32 → 34.

Changed:

| ID | Task | Start | Finish | Complete | Total float | Other |
| --- | --- | --- | --- | --- | --- | --- |
| 13 | **FASE 3 — Gjennomforing** |  |  | 76% → 93% |  |  |
| 24 | L12 — Teorikapittel: kø-teori, Erlang-C, QED/square-root staffing, multiserver-jobs, op-binder-semantikk |  | 2026-04-19 A | 58% → 100% | 10d → none |  |
| 28 | L15 — Resultater og diskusjon: rapportutkast inkl. operative saertrekk og modellbegrensninger |  | 2026-04-10 A → 2026-04-10 |  |  |  |
| 29 | L15a — Skrive kap 1 Innledning | 2026-04-07 A → 2026-04-07 |  |  |  |  |
| 30 | L15b — Skrive kap 3 Teori | 2026-04-07 A → 2026-04-07 |  |  |  |  |
| 32 | L15d — Skrive kap 9 Konklusjon |  | 2026-04-20 A → 2026-04-20 |  |  |  |
| 33 | L15e — Sammenstille rapportutkast (sammendrag, vedlegg, skjelett-synk, referanseliste) | 2026-04-20 A → 2026-04-20 |  |  |  |  |
| 34 | L8d — Nasjonal DSB 2025-oversikt (508 228 oppdrag, alle 12 sentraler) |  | 2026-04-20 A → 2026-04-20 |  |  |  |
| 35 | L8e — Spørreskjemaer 110-sentraler (intern kalibrering) |  |  | 69% → 70% |  |  |
| 36 | L8f — DSB-ønskeliste BRIS-datauttrekk (22 datapunkter) |  | 2026-04-20 A → 2026-04-20 |  |  |  |
| 37 | L11c — V3-regelutvidelse: L-aba krever Kilde=Alarm |  | 2026-04-21 A → 2026-04-21 |  |  |  |
| 38 | L11d — V3 op-binder-semantikk + D-pri1/D-aba-splitt (2 ops vs serial) |  | 2026-04-21 A → 2026-04-21 |  |  |  |
| 39 | L13b — LABA Sør-Vest dybdeanalyse n=50 (utfylt) |  | 2026-04-21 A → 2026-04-21 |  |  |  |
| 40 | L13c — LABA Sør-Vest dybdeanalyse n=100 (ferdig utfylt) |  |  | 33% → 100% | 25d → none | was named L13c — LABA Sør-Vest dybdeanalyse n=100 (sendt 20.04, venter) |
| 41 | L14b — Nasjonal 2025-analyse per sentral |  | 2026-04-20 A → 2026-04-20 |  |  |  |
